# ljekarna

How a schedule from MS Project changed from version to version. A marks actual dates.

## Version 1 (saved 2014-04-22)

Note of the change: Terminski plan

| ID | WBS | Task | Duration | Start | Finish | Predecessors | Total float |
| --- | --- | --- | --- | --- | --- | --- | --- |
| 1 | 1 | **Ljekarna.NET** | 20.81d | 2014-03-26 | 2014-06-12 |  | 0d |
| 2 |  | POČETAK PROJEKTA | 0d | 2014-03-26 | 2014-03-26 |  | 0d |
| 3 | 1.2 | **Planiranje projekta** | 1.31d | 2014-03-26 | 2014-03-31 | 2 | 0d |
| 4 |  | Definiranje projektnog tima | 2h | 2014-03-26 | 2014-03-26 | 2 | 0d |
| 5 | 1.2.2 | **Prvi sastanak** | 1.06d | 2014-03-26 | 2014-03-31 | 4 | 0d |
| 6 |  | Proučavanje korisničkih zahtjeva | 3h | 2014-03-26 | 2014-03-27 | 4 | 0d |
| 7 | 1.2.2.2 | **Definiranje projekta** | 0.69d | 2014-03-27 | 2014-03-31 | 6 | 0d |
| 8 |  | Opis domene projekta | 1h | 2014-03-27 | 2014-03-27 | 6 | 0d |
| 9 |  | Dizajniranje arhitekture sustava | 3h | 2014-03-28 | 2014-03-28 | 8 | 0d |
| 10 |  | Specificiranje funkcionalnosti aplikacije | 1h | 2014-03-31 | 2014-03-31 | 9 | 0d |
| 11 |  | Odabir potrebne tehnologije | 30min | 2014-03-31 | 2014-03-31 | 10 | 0d |
| 12 |  | ZAVRŠETAK PRVOG SASTANKA | 0d | 2014-03-31 | 2014-03-31 | 5 | 0d |
| 13 |  | ZAVRŠEKTA PLANIRANJA PROJEKTA | 0d | 2014-03-31 | 2014-03-31 | 3 | 0d |
| 14 | 1.4 | **Modeliranje** | 4.88d | 2014-03-31 | 2014-04-17 | 13 | 0d |
| 15 | 1.4.1 | **Drugi sastanak** | 1.75d | 2014-03-31 | 2014-04-07 | 13 | 0d |
| 16 |  | Rekapitulacija prvog sastanka | 30min | 2014-03-31 | 2014-03-31 | 13 | 0d |
| 17 |  | Raspodjela zadataka članovima tima | 30min | 2014-03-31 | 2014-03-31 | 16 | 0d |
| 18 |  | Specifikacija korisničkih zahtjeva | 3h | 2014-03-31 | 2014-04-01 | 17 | 0d |
| 19 |  | Analiza poslovne domene | 2h | 2014-04-01 | 2014-04-02 | 18 | 0d |
| 20 |  | Izrada gantograma aktivnosti | 4h | 2014-04-02 | 2014-04-03 | 19 | 0d |
| 21 |  | Izrada proračuna i budžeta | 3h | 2014-04-03 | 2014-04-04 | 20 | 0d |
| 22 |  | Izrada ponude naručitelju | 60min | 2014-04-04 | 2014-04-07 | 21 | 0d |
| 23 |  | ZAVRŠETAK DRUGOG SASTANKA | 0d | 2014-04-07 | 2014-04-07 | 15 | 3.12d |
| 24 | 1.4.3 | **Modeliranje problemske domene UML dijagramima** | 1.75d | 2014-04-07 | 2014-04-11 | 22 | 0d |
| 25 | 1.4.3.1 | **Izrada UML dijagrama aktivnosti** | 0.5d | 2014-04-07 | 2014-04-08 | 22 | 0d |
| 26 |  | Dijagram aktivnosti prodaje | 2h | 2014-04-07 | 2014-04-07 | 22 | 0d |
| 27 |  | Dijagram aktivnosti naručivanja | 2h | 2014-04-07 | 2014-04-08 | 26 | 0d |
| 28 |  | Izrada UML dijagrama slučajeva korištenja | 1h | 2014-04-08 | 2014-04-08 | 27 | 0d |
| 29 |  | Izrada UML dijagram klasa | 3h | 2014-04-08 | 2014-04-09 | 28 | 0d |
| 30 |  | Izrada projektne dokumentacije za prvu fazu | 6h | 2014-04-09 | 2014-04-11 | 29 | 0d |
| 31 | 1.4.4 | **Modeliranje baze podataka** | 1.38d | 2014-04-11 | 2014-04-17 | 30 | 0d |
| 32 |  | Izrada ERA modela | 8h | 2014-04-11 | 2014-04-16 | 30 | 0d |
| 33 |  | PRVA PROVJERA | 0d | 2014-04-16 | 2014-04-16 | 32 | 0d |
| 34 |  | Generiranje SQL skripte | 2h | 2014-04-16 | 2014-04-17 | 33 | 0d |
| 35 |  | Izrada idejnih skica ekrana | 1h | 2014-04-17 | 2014-04-17 | 34 | 0d |
| 36 |  | ZAVRŠETAK MODELIRANJA | 0d | 2014-04-17 | 2014-04-17 | 14 | 0d |
| 37 | 1.6 | **Realizacija programskog rješenja** | 14.5d | 2014-04-17 | 2014-06-12 | 36 | 0d |
| 38 | 1.6.1 | **Izrada aplikacije u .NET** | 11.5d | 2014-04-17 | 2014-06-02 | 36 | 0d |
| 39 |  | Izrada modula za pretraživanje lijekova | 22h | 2014-04-17 | 2014-04-28 | 36 | 0d |
| 40 |  | Izrada modula za logiranje u sustav | 18h | 2014-04-28 | 2014-05-07 | 39 | 0d |
| 41 |  | Izrada modula za naručivanje lijekova | 18h | 2014-05-07 | 2014-05-15 | 40 | 0d |
| 42 |  | Izrada modula za ABC klasifikaciju | 16h | 2014-05-15 | 2014-05-23 | 41 | 0d |
| 43 |  | Izrada modula za analizu poslovanja | 18h | 2014-05-23 | 2014-06-02 | 42 | 0d |
| 44 |  | DRUGA PROVJERA | 0d | 2014-06-02 | 2014-06-02 | 43 | 0d |
| 45 |  | Testiranje programskog koda | 1d | 2014-06-02 | 2014-06-04 | 44 | 0d |
| 46 |  | Dorada aplikacije | 1d | 2014-06-04 | 2014-06-09 | 45 | 0d |
| 47 |  | Izrada projektne dokumentacije za završnu fazu | 1d | 2014-06-09 | 2014-06-12 | 46 | 0d |
| 48 |  | REALIZACIJA ZAVRŠENA | 0d | 2014-06-12 | 2014-06-12 | 37 | 0d |
| 49 | 1.8 | **Isporuka programskog rješenja** | 0.12d | 2014-06-12 | 2014-06-12 | 48 | 0d |
| 50 |  | Javna prezentacija i obrana aplikacije | 1h | 2014-06-12 | 2014-06-12 | 48, 49 | 0d |
| 51 |  | PROJEKT ZAVRŠEN | 0d | 2014-06-12 | 2014-06-12 | 50 | 0d |

## Version 2 (saved 2014-04-24)

Note of the change: Promjena u terminskom planu

Last finish 2014-06-12 → 2014-06-24 (+12d). Complete tasks 0 → 25.

Added:

| ID | Task | Duration | Start | Finish | Predecessors | Resources |
| --- | --- | --- | --- | --- | --- | --- |
| 28 | Dijagram aktivnosti stanja i lokacije skladištenja | 30min | 2014-04-07 18:30 A | 2014-04-07 19:00 A | 27 | Ivana; Josip; Laptop2; Tea |
| 29 | Dijagram aktivnosti provjere klijenta | 30min | 2014-04-07 18:30 A | 2014-04-07 19:00 A | 28 | Ivana; Josip; Laptop3; Tea |
| 30 | Dijagram aktivnosti ispisa računa | 30min | 2014-04-07 18:30 A | 2014-04-07 19:00 A | 29 | Ivana; Josip; Laptop2; Tea |
| 31 | Dijagram aktivnosti ažuriranja stanja lijekova | 30min | 2014-04-07 18:30 A | 2014-04-07 19:00 A | 30 | Ivana; Josip; Laptop2; Tea |
| 32 | Dijagram aktivnosti obavijesti o minimalnom stanju lijekova | 30min | 2014-04-07 18:30 A | 2014-04-07 19:00 A | 31 | Ivana; Josip; Laptop2; Tea |
| 49 | Izrada modula za izdavanje računa | 12h | 2014-06-02 18:30 | 2014-06-06 18:30 | 48 | Filip; Laptop1; Luka; Ivana; Josip; Tea |

Changed:

| ID | Task | Start | Finish | Duration | Complete | Total float | Predecessors | Other |
| --- | --- | --- | --- | --- | --- | --- | --- | --- |
| 1 | **Ljekarna.NET** | 2014-03-26 → 2014-03-26 08:00 A | 2014-06-12 → 2014-06-24 18:30 (+12d) | 20.81d → 23.31d | 0% → 25% |  |  |  |
| 2 | POČETAK PROJEKTA | 2014-03-26 → 2014-03-26 08:00 | 2014-03-26 → 2014-03-26 08:00 |  |  | 0d → 23.31d |  |  |
| 3 | **Planiranje projekta** | 2014-03-26 → 2014-03-26 18:00 A | 2014-03-31 → 2014-03-31 19:30 A |  | 0% → 100% | 0d → none |  |  |
| 4 | Definiranje projektnog tima | 2014-03-26 → 2014-03-26 18:00 A | 2014-03-26 → 2014-03-26 20:00 A |  | 0% → 100% | 0d → none |  |  |
| 5 | **Prvi sastanak** | 2014-03-26 → 2014-03-26 20:00 A | 2014-03-31 → 2014-03-31 19:30 A |  | 0% → 100% | 0d → none |  |  |
| 6 | Proučavanje korisničkih zahtjeva | 2014-03-26 → 2014-03-26 20:00 A | 2014-03-27 → 2014-03-27 20:00 A |  | 0% → 100% | 0d → none |  |  |
| 7 | **Definiranje projekta** | 2014-03-27 → 2014-03-27 20:00 A | 2014-03-31 → 2014-03-31 19:30 A |  | 0% → 100% | 0d → none |  |  |
| 8 | Opis domene projekta | 2014-03-27 → 2014-03-27 20:00 A | 2014-03-27 → 2014-03-27 21:00 A |  | 0% → 100% | 0d → none |  |  |
| 9 | Dizajniranje arhitekture sustava | 2014-03-28 → 2014-03-28 18:00 A | 2014-03-28 → 2014-03-28 21:00 A |  | 0% → 100% | 0d → none |  |  |
| 10 | Specificiranje funkcionalnosti aplikacije | 2014-03-31 → 2014-03-31 18:00 A | 2014-03-31 → 2014-03-31 19:00 A |  | 0% → 100% | 0d → none |  |  |
| 11 | Odabir potrebne tehnologije | 2014-03-31 → 2014-03-31 19:00 A | 2014-03-31 → 2014-03-31 19:30 A |  | 0% → 100% | 0d → none |  |  |
| 12 | ZAVRŠETAK PRVOG SASTANKA | 2014-03-31 → 2014-03-31 19:30 A | 2014-03-31 → 2014-03-31 19:30 A |  | 0% → 100% | 0d → none |  |  |
| 13 | ZAVRŠEKTA PLANIRANJA PROJEKTA | 2014-03-31 → 2014-03-31 19:30 A | 2014-03-31 → 2014-03-31 19:30 A |  | 0% → 100% | 0d → none |  |  |
| 14 | **Modeliranje** | 2014-03-31 → 2014-03-31 19:30 A | 2014-04-17 → 2014-04-17 19:30 |  | 0% → 92% |  |  |  |
| 15 | **Drugi sastanak** | 2014-03-31 → 2014-03-31 19:30 A | 2014-04-07 → 2014-04-07 18:30 A |  | 0% → 100% | 0d → none |  |  |
| 16 | Rekapitulacija prvog sastanka | 2014-03-31 → 2014-03-31 19:30 A | 2014-03-31 → 2014-03-31 20:00 A |  | 0% → 100% | 0d → none |  |  |
| 17 | Raspodjela zadataka članovima tima | 2014-03-31 → 2014-03-31 20:00 A | 2014-03-31 → 2014-03-31 20:30 A |  | 0% → 100% | 0d → none |  |  |
| 18 | Specifikacija korisničkih zahtjeva | 2014-03-31 → 2014-03-31 20:30 A | 2014-04-01 → 2014-04-01 20:30 A |  | 0% → 100% | 0d → none |  |  |
| 19 | Analiza poslovne domene | 2014-04-01 → 2014-04-01 20:30 A | 2014-04-02 → 2014-04-02 19:30 A |  | 0% → 100% | 0d → none |  |  |
| 20 | Izrada gantograma aktivnosti | 2014-04-02 → 2014-04-02 19:30 A | 2014-04-03 → 2014-04-03 20:30 A |  | 0% → 100% | 0d → none |  |  |
| 21 | Izrada proračuna i budžeta | 2014-04-03 → 2014-04-03 20:30 A | 2014-04-04 → 2014-04-04 20:30 A |  | 0% → 100% | 0d → none |  |  |
| 22 | Izrada ponude naručitelju | 2014-04-04 → 2014-04-04 20:30 A | 2014-04-07 → 2014-04-07 18:30 A |  | 0% → 100% | 0d → none |  |  |
| 23 | ZAVRŠETAK DRUGOG SASTANKA | 2014-04-07 → 2014-04-07 18:30 A | 2014-04-07 → 2014-04-07 18:30 A |  | 0% → 100% | 3.12d → none |  |  |
| 24 | **Modeliranje problemske domene UML dijagramima** | 2014-04-07 → 2014-04-07 18:30 A | 2014-04-11 → 2014-04-11 20:30 |  | 0% → 99% | 0d → 1.38d |  |  |
| 25 | **Izrada UML dijagrama aktivnosti** | 2014-04-07 → 2014-04-07 18:30 A | 2014-04-08 → 2014-04-08 18:30 | 0.5d → 0.38d | 0% → 99% | 0d → 2.75d |  |  |
| 26 | Dijagram aktivnosti naručivanja lijekova | 2014-04-07 → 2014-04-07 18:30 A | 2014-04-07 → 2014-04-07 19:30 | 2h → 1h | 0% → 99% | 0d → 0.25d |  | was named Dijagram aktivnosti prodaje; resources Filip; Laptop1 → Filip; Laptop1; Ivana; Josip; Laptop2; Tea |
| 27 | Dijagram aktivnosti unosa naručivanja | 2014-04-07 → 2014-04-07 20:30 A | 2014-04-08 → 2014-04-08 18:30 | 2h → 1h | 0% → 99% | 0d → 2.75d |  | was named Dijagram aktivnosti naručivanja; resources Filip; Laptop1 → Filip; Laptop1; Ivana; Josip; Laptop2; Tea |
| 33 | Izrada UML dijagrama slučajeva korištenja | 2014-04-08 → 2014-04-08 19:30 A | 2014-04-08 → 2014-04-08 20:30 A |  | 0% → 100% | 0d → none | 27 → 32 |  |
| 34 | Izrada UML dijagram klasa | 2014-04-08 → 2014-04-08 20:30 A | 2014-04-09 → 2014-04-09 20:30 A |  | 0% → 100% | 0d → none |  |  |
| 35 | Izrada projektne dokumentacije za prvu fazu | 2014-04-09 → 2014-04-09 20:30 A | 2014-04-11 → 2014-04-11 20:30 A |  | 0% → 100% | 0d → none |  |  |
| 36 | **Modeliranje baze podataka** | 2014-04-11 → 2014-04-11 20:30 A | 2014-04-17 → 2014-04-17 19:30 |  | 0% → 73% |  |  |  |
| 37 | Izrada ERA modela | 2014-04-11 → 2014-04-11 20:30 A | 2014-04-16 → 2014-04-16 19:30 A |  | 0% → 100% | 0d → none |  |  |
| 38 | PRVA PROVJERA | 2014-04-16 → 2014-04-16 19:30 | 2014-04-16 → 2014-04-16 19:30 |  |  |  |  |  |
| 39 | Generiranje SQL skripte | 2014-04-16 → 2014-04-16 19:30 | 2014-04-17 → 2014-04-17 18:30 |  |  |  |  |  |
| 40 | Izrada idejnih skica ekrana | 2014-04-17 → 2014-04-17 18:30 | 2014-04-17 → 2014-04-17 19:30 |  |  |  |  |  |
| 41 | ZAVRŠETAK MODELIRANJA | 2014-04-17 → 2014-04-17 19:30 | 2014-04-17 → 2014-04-17 19:30 |  |  |  |  |  |
| 42 | **Realizacija programskog rješenja** | 2014-04-17 → 2014-04-17 19:30 | 2014-06-12 → 2014-06-23 20:30 (+11d) | 14.5d → 17d |  |  |  |  |
| 43 | **Izrada aplikacije u .NET** | 2014-04-17 → 2014-04-17 19:30 | 2014-06-02 → 2014-06-06 18:30 (+4d) | 11.5d → 13d |  |  |  |  |
| 44 | Izrada modula za pretraživanje lijekova | 2014-04-17 → 2014-04-17 19:30 | 2014-04-28 → 2014-04-28 20:30 |  |  |  |  |  |
| 45 | Izrada modula za prijavu u sustav | 2014-04-28 → 2014-04-28 20:30 | 2014-05-07 → 2014-05-07 20:30 |  |  |  |  | was named Izrada modula za logiranje u sustav; resources Josip; Luka; Laptop3 → Luka; Laptop3; Josip |
| 46 | Izrada modula za naručivanje lijekova | 2014-05-07 → 2014-05-07 20:30 | 2014-05-15 → 2014-05-15 20:30 |  |  |  |  |  |
| 47 | Izrada modula za provjeru klijenta | 2014-05-15 → 2014-05-15 20:30 | 2014-05-23 → 2014-05-23 18:30 |  |  |  |  | was named Izrada modula za ABC klasifikaciju |
| 48 | Izrada modula za analizu poslovanja | 2014-05-23 → 2014-05-23 18:30 | 2014-06-02 → 2014-06-02 18:30 |  |  |  |  |  |
| 50 | DRUGA PROVJERA | 2014-06-02 → 2014-06-06 18:30 (+4d) | 2014-06-02 → 2014-06-10 20:30 (+8d) | 0d → 1d |  |  | 48 → 49 |  |
| 51 | Testiranje programskog koda | 2014-06-02 → 2014-06-10 20:30 (+8d) | 2014-06-04 → 2014-06-13 19:30 (+9d) |  |  |  |  |  |
| 52 | Dorada aplikacije | 2014-06-04 → 2014-06-13 19:30 (+9d) | 2014-06-09 → 2014-06-18 18:30 (+9d) |  |  |  |  |  |
| 53 | Izrada projektne dokumentacije za završnu fazu | 2014-06-09 → 2014-06-18 18:30 (+9d) | 2014-06-12 → 2014-06-23 20:30 (+11d) |  |  |  |  |  |
| 54 | REALIZACIJA ZAVRŠENA | 2014-06-12 → 2014-06-23 20:30 (+11d) | 2014-06-12 → 2014-06-23 20:30 (+11d) |  |  |  |  |  |
| 55 | **Isporuka programskog rješenja** | 2014-06-12 → 2014-06-23 20:30 (+11d) | 2014-06-12 → 2014-06-24 18:30 (+12d) |  |  |  |  |  |
| 56 | Javna prezentacija i obrana aplikacije | 2014-06-12 → 2014-06-23 20:30 (+11d) | 2014-06-12 → 2014-06-24 18:30 (+12d) |  |  |  | 54, 55 → 54 |  |
| 57 | PROJEKT ZAVRŠEN | 2014-06-12 → 2014-06-24 18:30 (+12d) | 2014-06-12 → 2014-06-24 18:30 (+12d) |  |  |  |  |  |

## Version 3 (saved 2014-04-25)

Note of the change: Izmjene u terminskom planu i u izvještajima

Last finish stays 2014-06-24. Complete tasks 25 → 28.

Removed: 50 DRUGA PROVJERA

Changed:

| ID | Task | Start | Finish | Duration | Complete | Total float | Predecessors | Other |
| --- | --- | --- | --- | --- | --- | --- | --- | --- |
| 1 | **Ljekarna.NET** | 2014-03-26 08:00 A → 2014-03-26 A | 2014-06-24 18:30 → 2014-06-24 | 23.31d → 23.5d | 25% → 39% |  |  |  |
| 2 | POČETAK PROJEKTA | 2014-03-26 08:00 → 2014-03-26 A | 2014-03-26 08:00 → 2014-03-26 A |  | 0% → 100% | 23.31d → none |  |  |
| 3 | **Planiranje projekta** | 2014-03-26 18:00 A → 2014-03-26 A | 2014-03-31 19:30 A → 2014-04-03 A (+3d) | 1.31d → 2.62d |  |  |  |  |
| 4 | Definiranje projektnog tima | 2014-03-26 18:00 A → 2014-03-26 A | 2014-03-26 20:00 A → 2014-03-27 A (+1d) | 2h → 4h |  |  |  | resources Filip; Ivana; Josip; Luka; Tea → Ivana; Josip; Luka; Tea; Filip |
| 5 | **Prvi sastanak** | 2014-03-26 20:00 A → 2014-03-27 A (+1d) | 2014-03-31 19:30 A → 2014-04-03 A (+3d) | 1.06d → 2.12d |  |  |  |  |
| 6 | Proučavanje korisničkih zahtjeva | 2014-03-26 20:00 A → 2014-03-27 A (+1d) | 2014-03-27 20:00 A → 2014-03-28 A (+1d) | 3h → 5h |  |  |  |  |
| 7 | **Definiranje projekta** | 2014-03-27 20:00 A → 2014-03-31 A (+4d) | 2014-03-31 19:30 A → 2014-04-03 A (+3d) | 0.69d → 1.5d |  |  |  |  |
| 8 | Opis domene projekta | 2014-03-27 20:00 A → 2014-03-31 A (+4d) | 2014-03-27 21:00 A → 2014-03-31 A (+4d) | 1h → 2h |  |  |  |  |
| 9 | Dizajniranje arhitekture sustava | 2014-03-28 18:00 A → 2014-03-31 A (+3d) | 2014-03-28 21:00 A → 2014-04-02 A (+5d) | 3h → 5h |  |  |  | resources Ivana; Josip; Laptop2; Luka → Ivana; Josip; Laptop2; Laptop3; Laptop4; Luka |
| 10 | Specificiranje funkcionalnosti aplikacije | 2014-03-31 18:00 A → 2014-04-02 A (+2d) | 2014-03-31 19:00 A → 2014-04-03 A (+3d) | 1h → 4h |  |  |  | resources Josip; Laptop3; Luka → Josip; Laptop3 |
| 11 | Odabir potrebne tehnologije | 2014-03-31 19:00 A → 2014-04-03 A (+3d) | 2014-03-31 19:30 A → 2014-04-03 A (+3d) | 30min → 1h |  |  |  |  |
| 12 | ZAVRŠETAK PRVOG SASTANKA | 2014-03-31 19:30 A → 2014-04-03 A (+3d) | 2014-03-31 19:30 A → 2014-04-03 A (+3d) |  |  |  |  |  |
| 13 | ZAVRŠEKTA PLANIRANJA PROJEKTA | 2014-03-31 19:30 A → 2014-04-03 A (+3d) | 2014-03-31 19:30 A → 2014-04-03 A (+3d) |  |  |  |  |  |
| 14 | **Modeliranje** | 2014-03-31 19:30 A → 2014-04-04 A (+4d) | 2014-04-17 19:30 → 2014-04-30 (+13d) | 4.88d → 7d | 92% → 95% |  |  |  |
| 15 | **Drugi sastanak** | 2014-03-31 19:30 A → 2014-04-04 A (+4d) | 2014-04-07 18:30 A → 2014-04-14 A (+7d) | 1.75d → 2.62d |  |  |  |  |
| 16 | Rekapitulacija prvog sastanka | 2014-03-31 19:30 A → 2014-04-04 A (+4d) | 2014-03-31 20:00 A → 2014-04-04 A (+4d) | 30min → 1h |  |  |  |  |
| 17 | Raspodjela zadataka članovima tima | 2014-03-31 20:00 A → 2014-04-04 A (+4d) | 2014-03-31 20:30 A → 2014-04-04 A (+4d) | 30min → 1h |  |  |  | resources Laptop4; Luka → Luka |
| 18 | Specifikacija korisničkih zahtjeva | 2014-03-31 20:30 A → 2014-04-04 A (+4d) | 2014-04-01 20:30 A → 2014-04-07 A (+6d) | 3h → 4h |  |  |  | resources Ivana; Laptop5; Tea → Filip; Laptop1; Laptop4; Luka |
| 19 | Analiza poslovne domene | 2014-04-01 20:30 A → 2014-04-08 A (+7d) | 2014-04-02 19:30 A → 2014-04-08 A (+6d) | 2h → 3h |  |  |  | resources Josip; Laptop3; Tea → Josip; Laptop3; Laptop5; Tea |
| 20 | Izrada gantograma aktivnosti | 2014-04-02 19:30 A → 2014-04-09 A (+7d) | 2014-04-03 20:30 A → 2014-04-10 A (+7d) | 4h → 6h |  |  |  | resources Josip; Laptop3 → Josip; Laptop3; Ivana |
| 21 | Izrada proračuna i budžeta | 2014-04-03 20:30 A → 2014-04-11 A (+8d) | 2014-04-04 20:30 A → 2014-04-14 A (+10d) | 3h → 4h |  |  |  |  |
| 22 | Izrada ponude naručitelju | 2014-04-04 20:30 A → 2014-04-14 A (+10d) | 2014-04-07 18:30 A → 2014-04-14 A (+7d) | 60min → 2h |  |  |  |  |
| 23 | ZAVRŠETAK DRUGOG SASTANKA | 2014-04-07 18:30 A → 2014-04-14 A (+7d) | 2014-04-07 18:30 A → 2014-04-14 A (+7d) |  |  |  |  |  |
| 24 | **Modeliranje problemske domene UML dijagramima** | 2014-04-07 18:30 A → 2014-04-15 A (+8d) | 2014-04-11 20:30 → 2014-04-28 A (+17d) | 1.75d → 3.5d | 99% → 100% | 1.38d → none | 22 → 23 |  |
| 25 | **Izrada UML dijagrama aktivnosti** | 2014-04-07 18:30 A → 2014-04-15 A (+8d) | 2014-04-08 18:30 → 2014-04-21 A (+13d) | 0.38d → 1.75d | 99% → 100% | 2.75d → none | 22 → 23 |  |
| 26 | Dijagram aktivnosti naručivanja lijekova | 2014-04-07 18:30 A → 2014-04-15 A (+8d) | 2014-04-07 19:30 → 2014-04-15 A (+8d) | 1h → 2h | 99% → 100% | 0.25d → none | 22 → 23 | resources Filip; Laptop1; Ivana; Josip; Laptop2; Tea → Filip; Ivana; Laptop1; Laptop2; Josip; Tea |
| 27 | Dijagram aktivnosti unosa naručivanja | 2014-04-07 20:30 A → 2014-04-15 A (+8d) | 2014-04-08 18:30 → 2014-04-16 A (+8d) | 1h → 2h | 99% → 100% | 2.75d → none |  | resources Filip; Laptop1; Ivana; Josip; Laptop2; Tea → Filip; Ivana; Laptop1; Laptop2; Tea |
| 28 | Dijagram aktivnosti stanja i lokacije skladištenja | 2014-04-07 18:30 A → 2014-04-16 A (+9d) | 2014-04-07 19:00 A → 2014-04-16 A (+9d) | 30min → 2h |  |  |  | resources Ivana; Josip; Laptop2; Tea → Ivana; Laptop5; Tea; Josip; Laptop2; Laptop3 |
| 29 | Dijagram aktivnosti provjere klijenta | 2014-04-07 18:30 A → 2014-04-17 A (+10d) | 2014-04-07 19:00 A → 2014-04-17 A (+10d) | 30min → 2h |  |  |  | resources Ivana; Josip; Laptop3; Tea → Ivana; Josip; Laptop2; Laptop3; Laptop5; Tea |
| 30 | Dijagram aktivnosti ispisa računa | 2014-04-07 18:30 A → 2014-04-17 A (+10d) | 2014-04-07 19:00 A → 2014-04-18 A (+11d) | 30min → 2h |  |  |  | resources Ivana; Josip; Laptop2; Tea → Ivana; Josip; Laptop2; Laptop3; Laptop5; Tea |
| 31 | Dijagram aktivnosti ažuriranja stanja lijekova | 2014-04-07 18:30 A → 2014-04-18 A (+11d) | 2014-04-07 19:00 A → 2014-04-18 A (+11d) | 30min → 2h |  |  |  | resources Ivana; Josip; Laptop2; Tea → Ivana; Josip; Laptop2; Laptop3; Laptop5; Tea |
| 32 | Dijagram aktivnosti obavijesti o minimalnom stanju lijekova | 2014-04-07 18:30 A → 2014-04-21 A (+14d) | 2014-04-07 19:00 A → 2014-04-21 A (+14d) | 30min → 2h |  |  |  | resources Ivana; Josip; Laptop2; Tea → Ivana; Josip; Laptop2; Laptop3; Laptop5; Tea |
| 33 | Izrada UML dijagrama slučajeva korištenja | 2014-04-08 19:30 A → 2014-04-21 A (+13d) | 2014-04-08 20:30 A → 2014-04-22 A (+14d) | 1h → 4h |  |  |  | resources Filip; Laptop1; Laptop4; Luka → Filip; Ivana; Laptop1; Laptop2 |
| 34 | Izrada UML dijagram klasa | 2014-04-08 20:30 A → 2014-04-23 A (+15d) | 2014-04-09 20:30 A → 2014-04-24 A (+15d) | 3h → 4h |  |  |  |  |
| 35 | Izrada projektne dokumentacije za prvu fazu | 2014-04-09 20:30 A → 2014-04-24 A (+15d) | 2014-04-11 20:30 A → 2014-04-28 A (+17d) |  |  |  |  |  |
| 36 | **Modeliranje baze podataka** | 2014-04-11 20:30 A → 2014-04-28 A (+17d) | 2014-04-17 19:30 → 2014-04-30 (+13d) | 1.38d → 0.88d | 73% → 57% |  |  |  |
| 37 | Izrada ERA modela | 2014-04-11 20:30 A → 2014-04-28 A (+17d) | 2014-04-16 19:30 A → 2014-04-29 A (+13d) | 8h → 4h |  |  |  |  |
| 38 | PRVA PROVJERA | 2014-04-16 19:30 → 2014-04-29 (+13d) | 2014-04-16 19:30 → 2014-04-29 (+13d) |  |  |  |  |  |
| 39 | Generiranje SQL skripte | 2014-04-16 19:30 → 2014-04-29 (+13d) | 2014-04-17 18:30 → 2014-04-30 (+13d) |  |  |  |  | resources Filip; Ivana; Laptop1; Laptop4; Luka → Filip; Luka; Laptop1; Laptop4 |
| 40 | Izrada idejnih skica ekrana | 2014-04-17 18:30 → 2014-04-30 (+13d) | 2014-04-17 19:30 → 2014-04-30 (+13d) |  |  |  |  | resources Josip; Laptop3; Tea → Filip; Laptop1; Laptop4; Luka; Tea |
| 41 | ZAVRŠETAK MODELIRANJA | 2014-04-17 19:30 → 2014-04-30 (+13d) | 2014-04-17 19:30 → 2014-04-30 (+13d) |  |  |  |  |  |
| 42 | **Realizacija programskog rješenja** | 2014-04-17 19:30 → 2014-04-30 (+13d) | 2014-06-23 20:30 → 2014-06-24 (+1d) | 17d → 13.75d |  |  |  |  |
| 43 | **Izrada aplikacije u .NET** | 2014-04-17 19:30 → 2014-04-30 (+13d) | 2014-06-06 18:30 → 2014-06-04 (-2d) | 13d → 9d |  |  |  |  |
| 44 | Izrada modula za pretraživanje lijekova | 2014-04-17 19:30 → 2014-04-30 (+13d) | 2014-04-28 20:30 → 2014-05-08 (+10d) | 22h → 14h |  |  |  | resources Filip; Ivana; Laptop1 → Filip; Laptop1; Laptop4; Luka |
| 45 | Izrada modula za prijavu u sustav | 2014-04-28 20:30 → 2014-05-08 (+10d) | 2014-05-07 20:30 → 2014-05-14 (+7d) | 18h → 12h |  |  |  | resources Luka; Laptop3; Josip → Ivana; Laptop2; Laptop5; Tea |
| 46 | Izrada modula za naručivanje lijekova | 2014-05-07 20:30 → 2014-05-14 (+7d) | 2014-05-15 20:30 → 2014-05-20 (+5d) | 18h → 12h |  |  |  | resources Filip; Laptop5; Tea → Filip; Josip; Laptop1; Laptop3 |
| 47 | Izrada modula za provjeru klijenta | 2014-05-15 20:30 → 2014-05-20 (+5d) | 2014-05-23 18:30 → 2014-05-23 | 16h → 10h |  |  |  | resources Ivana; Josip; Laptop3 → Laptop4; Laptop5; Luka; Tea |
| 48 | Izrada modula za analizu poslovanja | 2014-05-23 18:30 → 2014-05-23 | 2014-06-02 18:30 → 2014-05-29 (-4d) | 18h → 12h |  |  |  | resources Laptop5; Luka; Tea → Ivana; Laptop2; Laptop4; Luka; Tea |
| 49 | Izrada modula za izdavanje računa | 2014-06-02 18:30 → 2014-05-29 (-4d) | 2014-06-06 18:30 → 2014-06-04 (-2d) |  |  |  |  | resources Filip; Laptop1; Luka; Ivana; Josip; Tea → Filip; Josip; Laptop1; Laptop3 |
| 50 | Testiranje programskog koda | 2014-06-10 20:30 → 2014-06-04 (-6d) | 2014-06-13 19:30 → 2014-06-10 (-3d) | 1d → 12h |  |  | DRUGA PROVJERA → 49 | resources Filip; Ivana; Josip; Laptop1; Laptop2 → Ivana; Laptop2; Laptop4; Laptop5; Luka; Tea |
| 51 | Dorada aplikacije | 2014-06-13 19:30 → 2014-06-10 (-3d) | 2014-06-18 18:30 → 2014-06-17 (-1d) | 1d → 14h |  |  |  | resources Laptop5; Luka; Tea → Filip; Josip; Laptop1; Laptop3 |
| 52 | Izrada projektne dokumentacije za završnu fazu | 2014-06-18 18:30 → 2014-06-17 (-1d) | 2014-06-23 20:30 → 2014-06-24 (+1d) | 1d → 12h |  |  |  | resources Filip; Ivana; Josip; Laptop2; Laptop4; Luka; Tea → Filip; Ivana; Josip; Laptop1; Laptop2; Laptop3; Laptop4; Laptop5; Luka; Tea |
| 53 | REALIZACIJA ZAVRŠENA | 2014-06-23 20:30 → 2014-06-24 (+1d) | 2014-06-23 20:30 → 2014-06-24 (+1d) |  |  |  |  |  |
| 54 | **Isporuka programskog rješenja** | 2014-06-23 20:30 → 2014-06-24 (+1d) | 2014-06-24 18:30 → 2014-06-24 |  |  |  |  |  |
| 55 | Javna prezentacija i obrana aplikacije | 2014-06-23 20:30 → 2014-06-24 (+1d) | 2014-06-24 18:30 → 2014-06-24 |  |  |  |  |  |
| 56 | PROJEKT ZAVRŠEN | 2014-06-24 18:30 → 2014-06-24 | 2014-06-24 18:30 → 2014-06-24 |  |  |  | 55 → 1 |  |
